# POC项目

Schedule from a web Gantt chart, 2024-09-25 to 2025-02-14.
Saturdays and Sundays are off

## Schedule

| ID | WBS | Task | Duration | Start | Finish | Predecessors | Complete | inPeople | Status |
| --- | --- | --- | --- | --- | --- | --- | --- | --- | --- |
| 2 | 1 | 功能列表确认 | 8d | 2024-09-25 | 2024-10-04 |  | 100% | 本田 | done |
| 3 | 2 | 开发文档交付 | 19d | 2024-10-07 | 2024-10-31 | 2 | 30% | 虹软 |  |
| 4 | 3 | 功能列表-UE确认 | 6d | 2024-10-07 | 2024-10-14 | 2 | 100% | 本田 | done |
| 5 | 4 | 功能列表-内部UI作成 | 5d | 2024-10-15 | 2024-10-21 | 4 |  | 虹软 | waiting |
| 6 | 5 | 功能列表-测试CASE-V1 | 1d | 2024-10-15 | 2024-10-15 | 4 |  | 虹软 |  |
| 7 | 6 | 功能列表-异常诊断-V1 | 1d | 2024-10-15 | 2024-10-15 | 4 |  | 虹软 |  |
| 8 | 7 | 开发环境-开发板提供 | 23d | 2024-09-25 | 2024-10-25 |  | 50% | 阿尔派 |  |
| 9 | 8 | 整车环境-OMS相机采购 | 10d | 2024-10-14 | 2024-10-25 |  |  | 虹软 | waiting |
| 10 | 9 | 整车环境-AVM相机采购 | 6d | 2024-10-11 | 2024-10-18 |  |  | 虹软 |  |
| 11 | 10 | 8255平台移植 | 15d | 2024-10-28 | 2024-11-15 | 8, 10, 9 |  | Alpine&ArcSoft | waiting |
| 12 | 11 | 感知算法调优 | 20d | 2024-11-18 | 2024-12-13 | 11 |  | ArcSoft | waiting |
| 13 | 12 | 台架联合调试 | 20d | 2024-11-18 | 2024-12-13 | 11 |  | Alpine&ArcSoft | waiting |
| 14 | 13 | 实车联合调试 | 13d | 2024-12-16 | 2025-01-01 | 13 |  | Alpine&ArcSoft | waiting |
| 15 | 14 | β版本交付 | 12d | 2025-01-02 | 2025-01-17 | 14 |  | ArcSoft | waiting |
| 16 | 15 | 整车环境-车辆提供 | 23d | 2024-09-25 | 2024-10-25 |  | 50% | 虹宜 |  |
| 17 | 16 | MCU开发环境-MCU接口资料准备 | 3d | 2024-10-14 | 2024-10-16 |  |  | 阿尔派 | waiting |
| 18 | 17 | MCU控制协议-破解和调试 | 10d | 2024-10-28 | 2024-11-08 | 19, 17, 16 |  | 虹软&虹宜 | waiting |
| 19 | 18 | MCU开发环境-编译器及工具准备 | 6d | 2024-10-14 | 2024-10-21 |  |  | 虹宜 | waiting |
| 20 | 19 | 实车效果调优 | 10d | 2025-01-20 | 2025-01-31 | 15 |  | ArcSoft | waiting |
| 21 | 20 | Final版本交付 | 5d | 2025-02-03 | 2025-02-07 | 20 |  | ArcSoft | waiting |
| 22 | 21 | 版本验收 | 5d | 2025-02-10 | 2025-02-14 | 21 |  | HMCT&Alpine&ArcSoft | waiting |

Notes:
- 2: 项目方确认的SOR/项目计划表
- 3: 方案设计说明、API文档、项目开发计划，接口沟通
- 6: 参考i-VISTA的评测
- 7: 不允许出现没有提示的系统异常
- 8: 样件板
- 11: 示例程序、α版SDK、测试报告（α版本用于集成调试）
- 12: 精度测试报告
- 13: 上车前的联调
- 14: 具备目标功能的实车
- 15: 功能说明文档、示例程序、β版SDK、测试报告
- 16: 1辆目标实车（运至杭州，需要有临牌和商业保险）
- 17: CAN信号接口、RPC调用、TASK注册相关开发资料提供
- 20: 目标功能优化的实车
- 21: 功能说明文档、示例程序、Final版SDK、测试报告
- 22: 验收报告
